# Stargazer - Semester 2

Schedule from MS Project, 2010-01-06 to 2010-04-07, 4 hours a day.
Okanagan College

## Calendars

- Standard: Mon 14:00-16:30; Tue off; Wed 14:30-16:30; Thu 14:30-18:30; Fri-Sun off. Exceptions (off unless hours are given): 2010-04-06 08:00-12:00, 13:00-17:00.

## Resources

| Resource |
| --- |
| Robert |
| Rob |

## Schedule

| ID | WBS | Task | Type | Duration | Start | Finish | Predecessors | Total slack | Free slack | Constraint | Resources | Work | Text1 |
| --- | --- | --- | --- | --- | --- | --- | --- | --- | --- | --- | --- | --- | --- |
| 1 | 1 | **Iteration 5: Release #3** |  | 4.25d | 2010-01-06 14:30 | 2010-01-20 08:00 |  | 5.5d | 0d |  |  | 22h | 16 |
| 2 | 1.1 | **Web system** |  | 2.25d | 2010-01-07 14:30 | 2010-01-14 15:00 |  | 7d |  |  |  | 12.75h | 16 |
| 3 | 1.1.1 | Add new online help documentation to website |  | 3h | 2010-01-11 14:00 | 2010-01-13 15:00 |  | 7.5d |  | start no earlier than 2010-01-11 08:00 | Robert | 3h | 12 |
| 4 | 1.1.2 | Fix CSS with mobile devices |  | 15min | 2010-01-07 14:30 | 2010-01-07 14:45 |  | 9.19d |  | start no earlier than 2010-01-07 08:00 | Rob | 0.25h |  |
| 5 | 1.1.3 | Minor refactoring |  | 1.5h | 2010-01-07 14:30 | 2010-01-07 16:00 |  | 8.88d |  | start no earlier than 2010-01-07 08:00 | Rob | 1.5h |  |
| 6 | 1.1.4 | Integrate libraries (which have celestial objects of interest) to web site |  | 5h | 2010-01-11 14:00 | 2010-01-14 15:00 |  | 7d |  | start no earlier than 2010-01-11 08:00 | Robert | 5h | 20 |
| 7 | 1.1.5 | Research Rails plugin to handle scheduling |  | 2h | 2010-01-07 14:30 | 2010-01-07 16:30 |  | 8.5d | 0.5d | start no earlier than 2010-01-07 08:00 | Rob | 2h |  |
| 8 | 1.1.6 | Create script which includes connection to telescope server |  | 1h | 2010-01-11 14:00 | 2010-01-11 15:00 | 7 | 8d |  | start no earlier than 2010-01-11 08:00 | Rob | 1h |  |
| 9 | 1.2 | **Telescope-controlling application** |  | 0.31d | 2010-01-13 14:30 | 2010-01-13 15:45 |  | 7.31d |  |  |  | 1.25h | 16 |
| 10 | 1.2.1 | Allow for parking the telescope |  | 15min | 2010-01-13 14:30 | 2010-01-13 14:45 |  | 7.31d | 0d | start no earlier than 2010-01-13 08:00 | Robert | 0.25h |  |
| 11 | 1.2.2 | Allow for telescope movement ability from entered celestial coordinates |  | 1h | 2010-01-13 14:45 | 2010-01-13 15:45 | 10 | 7.31d |  | start no earlier than 2010-01-13 08:00 | Robert | 1h |  |
| 12 | 1.3 | **Documentation** |  | 3.38d | 2010-01-06 14:30 | 2010-01-14 17:30 |  | 6.38d |  |  |  | 8h | 16 |
| 13 | 1.3.1 | Documentation updates |  | 2h | 2010-01-06 14:30 | 2010-01-06 16:30 |  | 8.5d | 2.12d |  | Rob; Robert | 4h |  |
| 14 | 1.3.2 | Draft acceptance test |  | 1h | 2010-01-14 14:30 | 2010-01-14 15:30 |  | 6.88d |  | start no earlier than 2010-01-14 08:00 | Rob | 1h |  |
| 15 | 1.3.3 | Create class diagram for telescope-controlling application |  | 1h | 2010-01-14 14:30 | 2010-01-14 15:30 | 13 | 6.38d | 0d | start no earlier than 2010-01-14 08:00 | Robert | 1h |  |
| 16 | 1.3.4 | Create sequence diagrams for telescope-controlling application |  | 2h | 2010-01-14 15:30 | 2010-01-14 17:30 | 15 | 6.38d |  | start no earlier than 2010-01-14 08:00 | Robert | 2h |  |
| 17 | 1.4 | Release #3 | milestone | 0d | 2010-01-20 08:00 | 2010-01-20 08:00 |  | 5.5d |  | start no earlier than 2010-01-20 08:00 | Rob; Robert |  |  |
| 19 | 2 | **Iteration 6: Release #4** |  | 16d | 2010-01-20 08:00 | 2010-03-11 17:00 | 1 | 5.5d | 0d |  |  | 142.5h | 16 |
| 20 | 2.1 | **Web system** |  | 0.88d | 2010-01-20 14:30 | 2010-01-21 16:00 |  | 20.62d |  |  |  | 10h | 16 |
| 21 | 2.1.1 | Implement mail server/mailing system |  | 3.5h | 2010-01-20 14:30 | 2010-01-21 16:00 |  | 20.62d |  |  | Rob | 3.5h | 14 |
| 22 | 2.1.2 | Add pagination to tables (e.g. schedule log table) |  | 2.5h | 2010-01-20 14:30 | 2010-01-21 15:00 |  | 20.88d |  |  | Rob | 2.5h | 10 |
| 23 | 2.1.3 | Changes to schedule log filtering for mobile device views |  | 1h | 2010-01-20 14:30 | 2010-01-20 15:30 |  | 21.25d |  |  | Rob | 1h |  |
| 24 | 2.1.4 | Fix functional tests |  | 3h | 2010-01-20 14:30 | 2010-01-21 15:30 |  | 20.75d |  | start no earlier than 2010-01-07 08:00 | Rob | 3h | 12 |
| 25 | 2.2 | **Telescope-controlling application** |  | 1.12d | 2010-01-20 14:30 | 2010-01-21 17:00 |  | 20.38d |  |  |  | 4.5h | 16 |
| 26 | 2.2.1 | Integrate camera to telescope-controlling application |  | 4.5h | 2010-01-20 14:30 | 2010-01-21 17:00 |  | 20.38d | 14.88d |  | Robert | 4.5h | 18 |

| ID | WBS | Task | Type | Duration | Start | Finish | Predecessors | Total slack | Free slack | Constraint | Resources | Work | Text1 |
| --- | --- | --- | --- | --- | --- | --- | --- | --- | --- | --- | --- | --- | --- |
| 27 | 2.3 | **Documentation** |  | 16d | 2010-01-20 14:30 | 2010-03-11 17:00 |  | 5.5d |  |  |  | 128h | 16 |
| 28 | 2.3.1 | Update documentation |  | 16d | 2010-01-20 14:30 | 2010-03-11 17:00 |  | 5.5d |  |  | Rob; Robert | 128h | 256 |
| 29 | 2.4 | Release #4 | milestone | 0d | 2010-01-20 08:00 | 2010-01-20 08:00 |  | 21.5d |  |  | Rob; Robert |  |  |
| 31 | 3 | **Iteration 7: Release #5** |  | 2.38d | 2010-03-11 17:00 | 2010-03-18 18:00 | 19 | 5.5d | 0d |  |  | 34h | 16 |
| 32 | 3.1 | **Web system** |  | 0.88d | 2010-03-18 14:30 | 2010-03-18 18:00 |  | 5.5d |  |  |  | 3.5h | 16 |
| 33 | 3.1.1 | Implement manual telescope positioning |  | 3.5h | 2010-03-18 14:30 | 2010-03-18 18:00 | 37 | 5.5d |  |  | Rob | 3.5h | 14 |
| 34 | 3.2 | **Telescope-controlling application** |  | 2.25d | 2010-03-11 17:00 | 2010-03-18 17:30 |  | 5.5d |  |  |  | 22.5h | 16 |
| 35 | 3.2.1 | Research image recognition options |  | 3h | 2010-03-11 17:00 | 2010-03-15 15:30 |  | 5.62d | 0d |  | Rob; Robert | 6h | 12 |
| 36 | 3.2.2 | Implement functionality for compiling composite images |  | 4.5h | 2010-03-11 17:00 | 2010-03-17 15:00 | 26 | 6.75d |  |  | Robert | 4.5h | 18 |
| 37 | 3.2.3 | Implement ability for streaming images live to the web system |  | 6h | 2010-03-11 17:00 | 2010-03-17 16:30 | 26 | 5.5d | 0d |  | Rob | 6h | 24 |
| 38 | 3.2.4 | Implement functionality for image recognition |  | 6h | 2010-03-15 15:30 | 2010-03-18 17:30 | 35 | 5.62d |  |  | Robert | 6h | 24 |
| 39 | 3.3 | **Documentation** |  | 1d | 2010-03-11 17:00 | 2010-03-15 16:30 |  | 6.88d |  |  |  | 8h | 16 |
| 40 | 3.3.1 | Update documentation |  | 4h | 2010-03-11 17:00 | 2010-03-15 16:30 |  | 6.88d |  |  | Rob; Robert | 8h | 16 |
| 41 | 3.4 | Release #5 | milestone | 0d | 2010-03-11 17:00 | 2010-03-11 17:00 |  | 7.88d |  |  | Rob; Robert |  |  |
| 43 | 4 | **Iteration 8: Release #6** |  | 7d | 2010-03-18 18:00 | 2010-04-07 08:00 | 31 | 0d |  |  |  | 31.75h | 16 |
| 44 | 4.1 | **Deployment** |  | 0.25d | 2010-03-18 18:00 | 2010-03-22 14:30 |  | 6.75d |  |  |  | 1.75h | 16 |
| 45 | 4.1.1 | Deploy systems to production environment |  | 1h | 2010-03-18 18:00 | 2010-03-22 14:30 |  | 6.75d |  |  | Rob | 1h |  |
| 46 | 4.1.2 | Migrate database to PostgreSQL |  | 45min | 2010-03-18 18:00 | 2010-03-22 14:15 |  | 6.81d |  |  | Rob | 0.75h |  |
| 47 | 4.2 | **Documentation** |  | 1.5d | 2010-03-18 18:00 | 2010-03-25 15:30 |  | 5.5d |  |  |  | 13h | 16 |
| 48 | 4.2.1 | Finalize documentation |  | 6h | 2010-03-18 18:00 | 2010-03-25 15:30 |  | 5.5d |  |  | Rob; Robert | 12h | 24 |
| 49 | 4.2.2 | Compile final metrics and project statistics |  | 1h | 2010-03-18 18:00 | 2010-03-22 14:30 |  | 6.75d |  |  | Robert | 1h |  |
| 50 | 4.3 | Final refactoring |  | 5h | 2010-03-18 18:00 | 2010-03-24 16:30 |  | 5.75d |  |  | Rob; Robert | 10h | 20 |
| 51 | 4.4 | Final user acceptance test |  | 1h | 2010-03-18 18:00 | 2010-03-22 14:30 |  | 6.75d |  |  | Rob; Robert | 2h |  |
| 52 | 4.5 | **Final Presentation** |  | 7d | 2010-03-18 18:00 | 2010-04-07 08:00 |  | 0d |  |  |  | 5h | 16 |
| 53 | 4.5.1 | Create PowerPoint for final presentation |  | 2.5h | 2010-03-18 18:00 | 2010-03-22 16:00 |  | 6.38d |  |  | Rob; Robert | 5h | 10 |
| 54 | 4.5.2 | Final presentation | milestone | 0d | 2010-04-07 08:00 | 2010-04-07 08:00 |  | 0d |  | start no earlier than 2010-04-07 08:00 | Rob; Robert |  |  |
| 55 | 4.6 | Final release | milestone | 0d | 2010-04-07 08:00 | 2010-04-07 08:00 |  | 0d |  | start no earlier than 2010-04-07 08:00 | Rob; Robert |  |  |
